# Proyecto Cotizador de Eventos

Schedule from MS Project, 2016-04-11 to 2016-08-11.

## Calendars

- Estándar: Mon-Fri 09:00-13:00, 15:00-19:00; Sat-Sun off.

## Schedule

| ID | WBS | Task | Type | Duration | Start | Finish | Predecessors | Total slack |
| --- | --- | --- | --- | --- | --- | --- | --- | --- |
| 1 | 1 | **COTIZADOR DE EVENTOS** |  | 88.6d | 2016-04-11 | 2016-08-11 |  | 0d |
| 2 | 1.1 | **Planeación del Proyecto** |  | 7d | 2016-04-11 | 2016-04-19 |  | 0d |
| 3 | 1.1.1 | Autorización de Proyecto y presupuesto | manual | 5d | 2016-04-11 | 2016-04-15 |  |  |
| 4 | 1.1.2 | Kick OFF de Proyecto | manual | 1d | 2016-04-18 | 2016-04-18 | 3 |  |
| 5 | 1.1.3 | Integrar equipo de trabajo KM&Asociados y Proveedor | manual | 1d | 2016-04-19 | 2016-04-19 | 4 |  |
| 6 | 1.2 | **Analisis** |  | 25d | 2016-04-20 | 2016-05-24 |  | 0d |
| 7 | 1.2.1 | Confirmar las Fuentes de Datos, Origen, Responsables | manual | 1d | 2016-04-20 | 2016-04-20 | 5 |  |
| 8 | 1.2.2 | Definición detallada de Modelo Operativo | manual | 15d | 2016-04-21 | 2016-05-11 | 7 |  |
| 9 | 1.2.3 | Definición de casos de uso | manual | 5d | 2016-05-12 | 2016-05-18 | 8 |  |
| 10 | 1.2.4 | Definición de casos de prueba y criterios de aceptación | manual | 1d | 2016-05-19 | 2016-05-19 | 9 |  |
| 11 | 1.2.5 | Elaboración de Plan detallado de trabajo | manual | 1d | 2016-05-20 | 2016-05-20 | 10 |  |
| 12 | 1.2.6 | Aprobación de plan detallado y casos de uso | manual | 2d | 2016-05-23 | 2016-05-24 | 11 |  |
| 13 | 1.3 | **Diseño** |  | 8d | 2016-05-12 | 2016-05-23 |  | 0d |
| 14 | 1.3.1 | Diseño de la arquitectura de la solución | manual | 7.5d | 2016-05-12 | 2016-05-23 | 8 |  |
| 15 | 1.3.2 | Diseño de Interfaz Gráfico | manual | 8d | 2016-05-12 | 2016-05-23 | 8 |  |
| 16 | 1.3.3 | Diseño de base de datos | manual | 2d | 2016-05-12 | 2016-05-13 | 8 |  |
| 17 | 1.3.4 | Diseño de objetos de reglas de negocio | manual | 4d | 2016-05-12 | 2016-05-17 | 8 |  |
| 18 | 1.3.5 | Diseño de conectividad con otros sistemas | manual | 0.74d | 2016-05-18 | 2016-05-18 | 17 |  |
| 19 | 1.4 | **Construcción** |  | 41.6d | 2016-05-16 | 2016-07-12 |  | 0d |
| 20 | 1.4.1 | Construcción de Interfaz Gráfico | manual | 20.2d | 2016-05-24 | 2016-06-21 | 15 |  |
| 21 | 1.4.2 | Construcción de base de datos | manual | 27d | 2016-05-16 | 2016-06-21 | 16 |  |
| 22 | 1.4.3 | **Construcción de Pantalla de acceso** |  | 0.6d | 2016-06-22 | 2016-06-22 |  | 0d |
| 23 | 1.4.3.1 | Construcción de Reglas, Objetos, Clases y Capa Intermedia (Interfases, Web Services)- Pantalla de acceso | manual | 0.6d | 2016-06-22 | 2016-06-22 | 21 |  |
| 24 | 1.4.4 | **Construcción Módulo de Inicio** |  | 1.2d | 2016-06-22 | 2016-06-23 |  | 0d |
| 25 | 1.4.4.1 | Construcción de Reglas, Objetos, Clases y Capa Intermedia (Interfases, Web Services)-Módulo de inicio | manual | 1.2d | 2016-06-22 | 2016-06-23 | 21 |  |

| ID | WBS | Task | Type | Duration | Start | Finish | Predecessors | Total slack |
| --- | --- | --- | --- | --- | --- | --- | --- | --- |
| 26 | 1.4.5 | **Construcción Módulo de Cotizaciones** |  | 3.2d | 2016-06-22 | 2016-06-27 |  | 0d |
| 27 | 1.4.5.1 | Construcción de Reglas, Objetos, Clases y Capa Intermedia (Interfases, Web Services)-Módulo de cotizaciones | manual | 3.2d | 2016-06-22 | 2016-06-27 | 23 |  |
| 28 | 1.4.6 | **Construcción Módulo de Eventos** |  | 3.2d | 2016-06-23 | 2016-06-28 |  | 0d |
| 29 | 1.4.6.1 | Construcción de Reglas, Objetos, Clases y Capa Intermedia (Interfases, Web Services)-Módulo de eventos | manual | 3.2d | 2016-06-23 | 2016-06-28 | 25 |  |
| 30 | 1.4.7 | **Construcción Módulo de transacciones** |  | 10d | 2016-06-27 | 2016-07-11 |  | 0d |
| 31 | 1.4.7.1 | Construcción de Reglas, Objetos, Clases y Capa Intermedia (Interfases, Web Services)-Módulo de transacciones | manual | 10d | 2016-06-27 | 2016-07-11 | 27 |  |
| 32 | 1.4.8 | **Construcción Módulo de bancos** |  | 0.6d | 2016-06-28 | 2016-06-28 |  | 0d |
| 33 | 1.4.8.1 | Construcción de Reglas, Objetos, Clases y Capa Intermedia (Interfases, Web Services)-Módulo de bancos | manual | 0.6d | 2016-06-28 | 2016-06-28 | 29 |  |
| 34 | 1.4.9 | **Construcción Módulo de catálogos** |  | 9.6d | 2016-06-29 | 2016-07-12 |  | 0d |
| 35 | 1.4.9.1 | Construcción de Reglas, Objetos, Clases y Capa Intermedia (Interfases, Web Services)-Módulo de catálogos | manual | 9.6d | 2016-06-29 | 2016-07-12 | 33 |  |
| 36 | 1.5 | **QA, Validación y Aprobación** |  | 29d | 2016-06-22 | 2016-08-02 |  | 0d |
| 37 | 1.5.1 | **Pruebas Unitarias** |  | 19d | 2016-06-22 | 2016-07-19 |  | 0d |
| 38 | 1.5.1.1 | PU Pantalla acceso | manual | 0.5d | 2016-06-22 | 2016-06-23 | 23 |  |
| 39 | 1.5.1.2 | PU Módulo de Inicio | manual | 1.2d | 2016-06-23 | 2016-06-24 | 25 |  |
| 40 | 1.5.1.3 | PU Módulo de Cotizaciones | manual | 4d | 2016-06-27 | 2016-07-01 | 27 |  |
| 41 | 1.5.1.4 | PU Módulo de eventos | manual | 4d | 2016-06-28 | 2016-07-04 | 29 |  |
| 42 | 1.5.1.5 | PU Módulo de transacciones | manual | 2d | 2016-07-11 | 2016-07-13 | 31 |  |
| 43 | 1.5.1.6 | PU Módulo de bancos | manual | 2d | 2016-06-29 | 2016-06-30 | 33 |  |
| 44 | 1.5.1.7 | PU Módulo de Catálogos | manual | 5d | 2016-07-12 | 2016-07-19 | 35 |  |
| 45 | 1.5.2 | Pruebas Integradas | manual | 10d | 2016-07-19 | 2016-08-02 | 44 |  |
| 46 | 1.6 | **Aceptación de Pruebas** |  | 35.5d | 2016-06-23 | 2016-08-11 |  | 0d |
| 47 | 1.6.1 | Documentación | manual | 15d | 2016-06-23 | 2016-07-14 | 38 |  |
| 48 | 1.6.2 | Capacitación a usuarios | manual | 6d | 2016-08-02 | 2016-08-10 | 45 |  |
| 49 | 1.6.3 | Instalación en producción | manual | 6d | 2016-08-02 | 2016-08-10 | 45 |  |
| 50 | 1.6.4 | Liberar aplicación | manual | 1d | 2016-08-10 | 2016-08-11 | 49 |  |
